# LLI Task Plan

Schedule from MS Project, 2005-01-03 to 2005-03-15.
NCI

## Calendars

- Standard: Mon-Fri 08:00-12:00, 13:00-17:00; Sat-Sun off.

## Resources

| Resource |
| --- |
| Patrick |
| Christo |
| Brenda |
| Sirisha |
| Charles |

## Schedule

| ID | WBS | Task | Duration | Start | Finish | Predecessors | Total slack | Free slack | Constraint | Resources | Work |
| --- | --- | --- | --- | --- | --- | --- | --- | --- | --- | --- | --- |
| 1 | 1 | **LLI (Lab Load Interface)** | 51.5d? | 2005-01-03 | 2005-03-15 |  | 0d |  | start no earlier than 2005-01-03 |  | 792h |
| 2 | 1.1 | **Inception** | 8d | 2005-01-03 | 2005-01-12 |  | 0d |  |  |  | 60h |
| 3 | 1.1.1 | Vision Document | 2d | 2005-01-03 | 2005-01-04 |  | 0d |  |  | Patrick | 16h |
| 4 | 1.1.2 | Functional Specifications | 2d | 2005-01-05 | 2005-01-06 | 3 | 0d |  |  | Patrick | 16h |
| 5 | 1.1.3 | Identify Risk List | 2d | 2005-01-07 | 2005-01-10 | 4 | 0d |  |  | Patrick | 16h |
| 6 | 1.1.4 | Document Review / Revision | 1d | 2005-01-11 | 2005-01-11 | 5, 3, 4 | 0d |  |  |  |  |
| 7 | 1.1.5 | Stakeholder Review / Sign-off | 0.5d | 2005-01-12 | 2005-01-12 | 3, 4, 6 | 0d |  |  | Christo; Brenda; Patrick | 12h |
| 8 | 1.1.6 | Refine Detailed Task Plan | 0.5d | 2005-01-12 | 2005-01-12 | 7 | 0d |  |  |  |  |
| 9 | 1.2 | **Elaboration** | 25d | 2005-01-03 | 2005-02-04 |  | 0d |  |  |  | 316h |
| 10 | 1.2.1 | **Iteration 1** | 13.5d | 2005-01-13 | 2005-02-01 |  | 0d |  |  |  | 228h |
| 11 | 1.2.1.1 | Design Critical Use Cases | 5d | 2005-01-13 | 2005-01-19 | 2 | 0d |  |  | Patrick; Sirisha | 80h |
| 12 | 1.2.1.2 | High Priority Screen Mock Ups (HTML) | 5d | 2005-01-20 | 2005-01-26 | 11 | 3.5d |  |  | Sirisha | 40h |
| 13 | 1.2.1.3 | Logical database design | 2d | 2005-01-20 | 2005-01-21 | 11 | 6.5d |  |  | Patrick; Sirisha | 32h |
| 14 | 1.2.1.4 | Design Interface to Lab Loader | 2d | 2005-01-20 | 2005-01-21 | 11 | 0d |  |  | Patrick | 16h |
| 15 | 1.2.1.5 | Create System Architecture Document | 5d | 2005-01-24 | 2005-01-28 | 14 | 0d |  |  | Patrick | 40h |
| 16 | 1.2.1.6 | Stakeholder Review | 0.5d | 2005-01-31 | 2005-01-31 | 15 | 0d |  |  | Christo; Brenda; Patrick | 12h |
| 17 | 1.2.1.7 | Refine Detailed Task Plan | 1d | 2005-01-31 | 2005-02-01 | 16 | 0d |  |  | Patrick | 8h |
| 18 | 1.2.2 | **Iteration II** | 25d | 2005-01-03 | 2005-02-04 |  | 0d |  |  |  | 88h |
| 19 | 1.2.2.1 | Develop Remaining Medium - High PriorityUse Cases | 2d | 2005-02-01 | 2005-02-03 | 10 | 0.5d | 0d |  | Sirisha; Patrick | 32h |
| 20 | 1.2.2.2 | Remaining Screen Mock Ups (HTML) | 5d | 2005-01-03 | 2005-01-07 |  | 20d |  |  |  |  |
| 21 | 1.2.2.3 | Implement data model | 1d | 2005-02-01 | 2005-02-02 | 10 | 2d |  |  | Sirisha | 8h |
| 22 | 1.2.2.4 | Implement Interface to Lab Loader | 2d | 2005-02-01 | 2005-02-03 | 10 | 0d |  |  | Patrick | 16h |
| 23 | 1.2.2.5 | Update System Architecture Document | 1d | 2005-02-03 | 2005-02-04 | 22 | 0d |  |  | Patrick | 8h |
| 24 | 1.2.2.6 | Stakeholder Review | 0.5d | 2005-02-04 | 2005-02-04 | 19, 21, 22, 23 | 0d |  |  | Christo; Brenda; Patrick | 12h |
| 25 | 1.2.2.7 | Peer Review | 0.5d | 2005-02-04 | 2005-02-04 | 23 | 0d |  |  | Charles | 4h |
| 26 | 1.2.2.8 | Refine Detailed Task Plan | 1d | 2005-02-03 | 2005-02-04 | 19 | 0.5d |  |  | Patrick | 8h |

| ID | WBS | Task | Type | Duration | Start | Finish | Predecessors | Total slack | Resources | Work |
| --- | --- | --- | --- | --- | --- | --- | --- | --- | --- | --- |
| 27 | 1.3 | **Construction** |  | 20d? | 2005-02-07 | 2005-03-04 |  | 0d |  | 324h |
| 28 | 1.3.1 | Develop Remaining Use Cases |  | 2d | 2005-02-07 | 2005-02-08 | 9 | 18d | Sirisha | 16h |
| 29 | 1.3.2 | Refine Detailed Task Plan |  | 0.5d | 2005-02-07 | 2005-02-07 | 9 | 19.5d | Patrick | 4h |
| 30 | 1.3.3 | **Implementation** |  | 6d | 2005-02-07 | 2005-02-14 |  | 0d |  | 96h |
| 31 | 1.3.3.1 | **Screens** |  | 5d | 2005-02-07 | 2005-02-11 |  | 0d |  | 56h |
| 32 | 1.3.3.1.1 | Design Screen |  | 3d | 2005-02-07 | 2005-02-09 | 9 | 0d | Sirisha | 24h |
| 33 | 1.3.3.1.2 | Development/Unit Testing |  | 2d | 2005-02-10 | 2005-02-11 | 32 | 0d | Sirisha | 16h |
| 34 | 1.3.3.2 | **Lab Loader Utility Enhancements** |  | 5d | 2005-02-07 | 2005-02-11 |  | 0d |  | 32h |
| 35 | 1.3.3.2.1 | Design |  | 2d | 2005-02-07 | 2005-02-08 | 9 | 3d | Patrick | 16h |
| 36 | 1.3.3.2.2 | Development/Unit Testing |  | 2d | 2005-02-10 | 2005-02-11 | 32 | 0d | Patrick | 16h |
| 37 | 1.3.3.3 | Peer Review |  | 1d | 2005-02-14 | 2005-02-14 | 31, 34 | 0d | Charles | 8h |
| 38 | 1.3.4 | **Integration Testing** |  | 9d | 2005-02-15 | 2005-02-25 | 30 | 0d |  | 128h |
| 39 | 1.3.4.1 | Write Test Scripts |  | 5d | 2005-02-15 | 2005-02-21 |  | 0d | Sirisha; Patrick | 80h |
| 40 | 1.3.4.2 | Execute Tests |  | 2d | 2005-02-22 | 2005-02-23 | 39 | 0d | Sirisha | 16h |
| 41 | 1.3.4.3 | Defect Fixes |  | 2d | 2005-02-24 | 2005-02-25 | 40 | 0d | Sirisha; Patrick | 32h |
| 42 | 1.3.5 | Release to QA |  | 0.25d? | 2005-02-28 | 2005-02-28 | 41 | 4.75d |  |  |
| 43 | 1.3.6 | **User Acceptance Testing** |  | 5d | 2005-02-25 | 2005-03-04 | 38 | 0d |  | 80h |
| 44 | 1.3.6.1 | Execute Tests |  | 5d | 2005-02-28 | 2005-03-04 |  | 0d |  |  |
| 45 | 1.3.6.2 | UAT Support |  | 5d | 2005-02-28 | 2005-03-04 |  | 0d | Sirisha; Patrick | 80h |
| 46 | 1.3.6.3 | UAT Sign Off | milestone | 0d | 2005-02-25 | 2005-02-25 |  | 5d |  |  |
| 47 | 1.4 | **Transition** |  | 6.5d? | 2005-03-07 | 2005-03-15 | 27 | 0d |  | 92h |
| 48 | 1.4.1 | **Documentation** |  | 6.5d | 2005-03-07 | 2005-03-15 |  | 0d |  | 92h |
| 49 | 1.4.1.1 | User Guide |  | 3d | 2005-03-07 | 2005-03-09 |  | 0d | Sirisha; Patrick | 48h |
| 50 | 1.4.1.2 | Update System Architecture Document |  | 1d | 2005-03-10 | 2005-03-10 | 49 | 0d | Patrick | 8h |
| 51 | 1.4.1.3 | Production Support Documentation |  | 2d | 2005-03-11 | 2005-03-14 | 50 | 0d | Sirisha; Patrick | 32h |
| 52 | 1.4.1.4 | Peer Review |  | 0.5d | 2005-03-15 | 2005-03-15 | 51 | 0d | Charles | 4h |
| 53 | 1.4.1.5 | Release to QA |  | 0.5d | 2005-03-15 | 2005-03-15 | 51 | 0d |  |  |

Notes:
- 31: As the # of screens are currently not known, I have only put in a place holder. This would have to be updated later based upon interation 1 (Design Critical Use Cases) and Interation II.
- 48: Documentation may take longer than 1 day. Documentation should be reviewed by Q/A as well. Also, should theer be a "How To" document for Production Promotion?

| ID | WBS | Task | Duration | Start | Finish | Total slack |
| --- | --- | --- | --- | --- | --- | --- |
| 54 | 1.4.2 | **Packaging** | 1d? | 2005-03-07 | 2005-03-07 | 5.5d |
| 55 | 1.4.2.1 | Promote to Production | 1d? | 2005-03-07 | 2005-03-07 | 5.5d |
